# Projeto-Recomendaçao de Auditoria

Schedule from MS Project, 2020-06-29 to 2020-10-14, A marks actual dates.

## Calendars

- Padrão: Mon-Fri 09:00-12:00, 13:00-18:00; Sat-Sun off.

## Resources

| Resource |
| --- |
| 8 |

## Schedule

| ID | WBS | Task | Duration | Start | Finish | Predecessors | Complete | Remaining | Total slack |
| --- | --- | --- | --- | --- | --- | --- | --- | --- | --- |
| 1 | 1 | **Recomendaçâo de Auditoria** | 78d | 2020-06-29 A | 2020-10-14 |  | 30% | 54.35d | 0d |
| 2 | 1.1 | Desenho da Arquitetura da solução | 3d | 2020-06-29 A | 2020-07-01 A |  | 100% |  |  |
| 3 | 1.2 | Definição de painéis básicos para visualização de dados | 4d | 2020-07-02 A | 2020-07-07 A | 2 | 100% |  |  |
| 4 | 1.3 | Análise de Dados e Alterações do Modelo | 5d | 2020-07-08 A | 2020-07-14 A | 3 | 100% |  |  |
| 5 | 1.4 | Submissão, análise e aprovação de Modelo de Dados na AD | 15d | 2020-07-15 A | 2020-08-04 A | 4 | 100% |  |  |
| 6 | 1.5 | Criação da base de dados em produção | 4d | 2020-08-05 A | 2020-08-10 | 5 | 30% | 2.8d | 0d |
| 7 | 1.6 | Job DataStage – base bruta para Tabela Fato | 8d | 2020-08-11 | 2020-08-20 | 6 |  |  | 0d |
| 8 | 1.7 | Implantação em Produção – Job DataStage | 7d | 2020-08-21 | 2020-08-31 | 7 |  |  | 0d |
| 9 | 1.8 | Agendamento no Control-M e acompanhamento | 10d | 2020-09-01 | 2020-09-14 | 8 |  |  | 0d |
| 10 | 1.9 | Construção Painel | 15d | 2020-08-21 | 2020-09-10 | 7, 4 |  |  | 17d |
| 11 | 1.10 | Carga da Base Histórica de 90 Dias | 15d | 2020-09-15 | 2020-10-05 | 9 |  |  | 0d |
| 12 | 1.11 | Coleta de Evidências para Certificação de Auditoria | 7d | 2020-10-06 | 2020-10-14 | 11, 10 |  |  | 0d |
